# TARRIS Desilting

Schedule from MS Project, 2015-11-01 to 2016-01-28, costs in ₱.

## Calendars

- Standard: Mon-Sun 08:00-12:00, 13:00-17:00.

## Resources

| Resource | Rate |
| --- | --- |
| Mobilization/Demobilization | 13561.4 |
| Temporary Facility | 9094.51 |
| Desilting 1 | 8404.99 |
| Desilting 2 | 7744.24 |
| Desilting 3 | 8531.69 |
| Desilting 4 | 7046.47 |
| Desilting 5 | 7800.91 |
| Desilting 6 | 8471.6 |
| Desilting 7 | 7609.73 |
| Desilting 8 | 8389.91 |
| Desilting 9 | 6525 |
| Desilting 10 | 7042.95 |
| Desilting 11 | 6810.59 |
| Disposal 1 | 27838.7 |
| Disposal 2 | 26184.6 |
| Disposal 3 | 24726.1 |
| Disposal 4 | 20421.7 |
| Disposal 5 | 30144.3 |
| Disposal 6 | 29813.1 |
| Disposal 7 | 22054.1 |
| Disposal 8 | 29718.6 |
| Disposal 9 | 28365.6 |
| Disposal 10 | 25514.4 |
| Disposal 11 | 29607.1 |
| Unclogging | 1392.58 |

## Schedule

| ID | WBS | Task | Type | Duration | Start | Finish | Predecessors | Total slack | Free slack | Constraint | Resources | Work | Cost | StartM | FinishM |
| --- | --- | --- | --- | --- | --- | --- | --- | --- | --- | --- | --- | --- | --- | --- | --- |
| 1 | 1 | Mobilization |  | 1d | 2015-11-01 | 2015-11-01 |  | 0d |  |  | Mobilization/Demobilization | 8h | 108,491.15 | Day 1 | Day 1 |
| 2 | 2 | Construction of Temporary Facility |  | 1d | 2015-11-02 | 2015-11-02 | 1 | 0d |  |  | Temporary Facility | 8h | 72,756.1 | Day 2 | Day 2 |
| 3 | 3 | **Desilting of Canal** |  | 72d | 2015-11-03 | 2016-01-13 |  | 0d |  |  |  | 576h | 4,587,840.03 |  |  |
| 4 | 3.1 | MC Sta. 0+000 - 0+457.23 |  | 8d | 2015-11-03 | 2015-11-10 | 2 | 0d |  |  | Desilting 1 | 64h | 537,919.04 | Day 3 | Day 10 |
| 5 | 3.2 | MC Sta.0+494.33 - 1+122.19 |  | 7d | 2015-11-11 | 2015-11-17 | 4 | 0d |  |  | Desilting 2 | 56h | 433,677.72 | Day 11 | Day 17 |
| 6 | 3.3 | MC Sta. 1+150.94 - 1+609.35 |  | 4d | 2015-11-18 | 2015-11-21 | 5 | 0d |  |  | Desilting 3 | 32h | 273,014.08 | Day 18 | Day 21 |
| 7 | 3.4 | MC Sta. 1+635.55 - 2+258.58 |  | 3d | 2015-11-22 | 2015-11-24 | 6 | 0d |  |  | Desilting 4 | 24h | 169,115.25 | Day 22 | Day 24 |
| 8 | 3.5 | MC Sta. 3+559.96 - 3+927.77 |  | 8d | 2015-11-25 | 2015-12-02 | 7 | 0d |  |  | Desilting 5 | 64h | 499,258.56 | Day 25 | Day 32 |
| 9 | 3.6 | MC Sta. 3+968.68 - 4+816.13 |  | 17d | 2015-12-03 | 2015-12-19 | 8 | 0d |  |  | Desilting 6 | 136h | 1,152,137.6 | Day 33 | Day 49 |
| 10 | 3.7 | MC Sta. 4+847.88 - 5+065.54 |  | 3d | 2015-12-20 | 2015-12-22 | 9 | 0d |  |  | Desilting 7 | 24h | 182,633.52 | Day 50 | Day 52 |
| 11 | 3.8 | MC Sta. 5+107.80 - 6+042.07 |  | 11d | 2015-12-23 | 2016-01-02 | 10 | 0d |  |  | Desilting 8 | 88h | 738,312.19 | Day 53 | Day 63 |
| 12 | 3.9 | MC Sta. 6+083.27 - 6+525.06 |  | 3d | 2016-01-03 | 2016-01-05 | 11 | 0d |  |  | Desilting 9 | 24h | 156,600 | Day 64 | Day 66 |
| 13 | 3.10 | Lateral B Sta. 2+440 - 3+005 |  | 5d | 2016-01-06 | 2016-01-10 | 12 | 0d |  |  | Desilting 10 | 40h | 281,718 | Day 67 | Day 71 |
| 14 | 3.11 | Lateral B Sta. 3+025 - 3+360 |  | 3d | 2016-01-11 | 2016-01-13 | 13 | 0d |  |  | Desilting 11 | 24h | 163,454.07 | Day 72 | Day 74 |
| 15 | 4 | **Disposal of Waste Material** |  | 71d | 2015-11-06 | 2016-01-15 |  | 0d |  |  |  | 472h | 13,069,315.04 |  |  |
| 16 | 4.1 | MC Sta. 0+000 - 0+457.23 |  | 7d | 2015-11-06 | 2015-11-12 |  | 71d | 0d | start no earlier than 2015-11-06 | Disposal 1 | 56h | 1,558,969.09 | Day 6 | Day 12 |
| 17 | 4.2 | MC Sta.0+494.33 - 1+122.19 |  | 6d | 2015-11-13 | 2015-11-18 | 16 | 71d |  |  | Disposal 2 | 48h | 1,256,862.24 | Day 13 | Day 18 |
| 18 | 4.3 | MC Sta. 1+150.94 - 1+609.35 |  | 4d | 2015-11-22 | 2015-11-25 | 6 | 64d |  |  | Disposal 3 | 32h | 791,235.28 | Day 22 | Day 25 |
| 19 | 4.4 | MC Sta. 1+635.55 - 2+258.58 |  | 3d | 2015-11-25 | 2015-11-27 | 7 | 62d |  |  | Disposal 4 | 24h | 490,121.07 | Day 25 | Day 27 |
| 20 | 4.5 | MC Sta. 3+559.96 - 3+927.77 |  | 6d | 2015-12-03 | 2015-12-08 | 8 | 51d |  |  | Disposal 5 | 48h | 1,446,925.38 | Day 33 | Day 38 |
| 21 | 4.6 | MC Sta. 3+968.68 - 4+816.13 |  | 14d | 2015-12-09 | 2015-12-22 |  | 37d |  | start no earlier than 2015-12-09 | Disposal 6 | 112h | 3,339,065.38 | Day 39 | Day 52 |
| 22 | 4.7 | MC Sta. 4+847.88 - 5+065.54 |  | 3d | 2015-12-23 | 2015-12-25 | 10 | 34d |  |  | Disposal 7 | 24h | 529,298.97 | Day 53 | Day 55 |
| 23 | 4.8 | MC Sta. 5+107.80 - 6+042.07 |  | 9d | 2016-01-03 | 2016-01-11 | 11 | 17d |  |  | Disposal 8 | 72h | 2,139,738.03 | Day 64 | Day 72 |
| 24 | 4.9 | MC Sta. 6+083.27 - 6+525.06 | manual | 1d | 2015-11-06 | 2015-11-06 | 12 |  |  |  | Disposal 9 | 8h | 226,925 | Day 67 | Day 67 |
| 25 | 4.10 | Lateral B Sta. 2+440 - 3+005 |  | 4d | 2016-01-11 | 2016-01-14 | 13 | 14d |  |  | Disposal 10 | 32h | 816,460.52 | Day 72 | Day 75 |
| 26 | 4.11 | Lateral B Sta. 3+025 - 3+360 |  | 2d | 2016-01-14 | 2016-01-15 | 14 | 0d |  |  | Disposal 11 | 16h | 473,714.08 | Day 75 | Day 76 |
| 27 | 5 | Unclogging of Cut and Cover |  | 12d | 2016-01-16 | 2016-01-27 | 26 | 0d |  | start no earlier than 2015-11-23 | Unclogging | 96h | 133,688.04 | Day 77 | Day 88 |
| 28 | 6 | Demobilization |  | 1d | 2016-01-28 | 2016-01-28 | 27 | 0d |  |  | Mobilization/Demobilization | 8h | 108,491.15 | Day 89 | Day 89 |
